# FlexiTime

Schedule from GanttProject, 2004-09-13 to 2005-04-26.
FlexiTime
Gestion des emplois du Temps / Projet de Génie Logiciel / Informatique Réseaux 3° année / Ingénieurs 2000 - Université de Marne-La-Vallée

## Calendars

- Project calendar: Mon-Fri working; Sat-Sun off.

## Resources

| Resource | Group |
| --- | --- |
| Jérôme GUERS |  |
| Fabien APPERT | Secrétaire + Responsable Client |
| Adrien BOUVET | Site Web + Responsable Qualité |
| Valère FOREL | Responsable Développement & test |
| Guillaume GUERRIN | Responsable technique |
| Prâsad RAMASSAMY | Responsable Interface Graphique |

## Schedule

| ID | WBS | Task | Type | Duration | Start | Finish | Predecessors | Complete | Resources |
| --- | --- | --- | --- | --- | --- | --- | --- | --- | --- |
| 1 | 1 | Définition du nom d'équipe | milestone | 0d | 2004-09-13 | 2004-09-13 |  | 100% |  |
| 2 | 2 | Attribution des rôles | milestone | 0d | 2004-09-14 | 2004-09-14 |  | 100% |  |
| 3 | 3 | **Gestion du planning** |  | 161d | 2004-09-14 | 2005-04-26 | 2 | 30% |  |
| 4 | 3.1 | Répartition des tâches CDC |  | 3d | 2004-09-14 | 2004-09-16 |  | 100% | Jérôme GUERS |
| 5 | 3.2 | Choix de l'outil de gestion de projet |  | 8d | 2004-09-17 | 2004-09-28 |  | 100% | Jérôme GUERS |
| 6 | 3.3 | Définition de l'état d'avancement |  | 4d | 2004-09-26 | 2004-09-30 |  | 100% | Jérôme GUERS [30%] |
| 7 | 3.4 | Répartition des tâches futures |  | 149d | 2004-09-26 | 2005-04-21 |  | 27% | Jérôme GUERS [10%] |
| 8 | 3.5 | Suivi de l'avancement |  | 149d | 2004-09-26 | 2005-04-21 |  | 27% | Jérôme GUERS [10%] |
| 9 | 4 | **Cahier Des Charges** |  | 17d | 2004-09-17 | 2004-10-11 |  | 100% |  |
| 10 | 4.1 | Répartition des tâches | milestone | 0d | 2004-09-17 | 2004-09-17 | 4 | 100% |  |
| 11 | 4.2 | Présentation de l'équipe |  | 1d | 2004-09-17 | 2004-09-17 | 10 | 100% | Fabien APPERT |
| 12 | 4.3 | Définition de la charte graphique |  | 5d | 2004-09-17 | 2004-09-23 | 10 | 100% | Adrien BOUVET |
| 13 | 4.4 | **Consultation du client** |  | 2d | 2004-09-20 | 2004-09-21 |  | 100% |  |
| 14 | 4.4.1 | Réunion | milestone | 0d | 2004-09-20 | 2004-09-20 |  | 100% | Fabien APPERT |
| 15 | 4.4.2 | Bilan des contraintes émises par le client |  | 1d | 2004-09-21 | 2004-09-21 | 14 | 100% | Fabien APPERT |
| 16 | 4.5 | Glossaire des termes importants |  | 8d | 2004-09-22 | 2004-10-01 | 10, 13 | 100% | Guillaume GUERRIN |
| 17 | 4.6 | Liste des acteurs du système |  | 3d | 2004-09-22 | 2004-09-24 | 10, 13 | 100% | Valère FOREL [80%] |
| 18 | 4.7 | Diagramme d'interaction |  | 5d | 2004-09-25 | 2004-10-01 | 17 | 100% | Valère FOREL [80%] |
| 19 | 4.8 | Listes des fonctionnalités |  | 8d | 2004-09-22 | 2004-10-01 | 10, 13 | 100% | Prâsad RAMASSAMY |
| 20 | 4.9 | Réalisation du Logo |  | 6d | 2004-09-22 | 2004-09-29 |  | 100% | Valère FOREL [20%]; Fabien APPERT [50%] |
| 21 | 4.10 | Première visualisation des documents CDC | milestone | 0d | 2004-09-23 | 2004-09-23 |  | 100% |  |
| 22 | 4.11 | Relecture et mise en conformité avec la chartre |  | 2d | 2004-09-28 | 2004-09-29 |  | 100% | Adrien BOUVET |
| 23 | 4.12 | Rendu Pré-Cahier des Charges | milestone | 0d | 2004-09-30 | 2004-09-30 |  | 100% | Jérôme GUERS |
| 24 | 4.13 | Signature du Cahier des Charges | milestone | 0d | 2004-10-04 | 2004-10-04 |  | 100% | Prâsad RAMASSAMY; Adrien BOUVET; Guillaume GUERRIN; Valère FOREL; Fabien APPERT; Jérôme GUERS |

Notes:
- 1: Au cours de la première scéance de TD
- 2: Chef de projet : JG / Responsable client + secrétaire : FA / Responsable Qualité + site web : AB / Responsable développemnt + test : VF / Responsable technique : GG / Responsable interface graphique : PR
- 5: 5 solutions testées : / - Gantt Project / - MS Project / - dotProject / - phpCollab / - eGroupWare
- 10: Réunion d'une heure pour répartir les tâches afférentes au CDC
- 11: 1h30
- 12: Réalisation d'un .dot / 5 revues : / - 2h / - 1h / - 30min / - 30min / - 1h
- 14: Réunion du 20/09/2004 avec Chrystel ALLEBE
- 15: 2h
- 16: 3h
- 17: 1h
- 18: 1h30
- 19: 3h
- 20: FA : 1h / VF : 2h
- 21: 1h30 de réunion
- 22: 2h

| ID | WBS | Task | Type | Duration | Start | Finish | Predecessors | Complete | Resources |
| --- | --- | --- | --- | --- | --- | --- | --- | --- | --- |
| 25 | 5 | **Mise en place de la communication** |  | 45d | 2004-09-22 | 2004-11-23 |  | 100% |  |
| 26 | 5.1 | Ouverture du compte Hébergeur |  | 1d | 2004-09-22 | 2004-09-22 |  | 100% | Adrien BOUVET [10%] |
| 27 | 5.2 | Création de la mailing list |  | 1d | 2004-09-23 | 2004-09-23 | 26 | 100% | Adrien BOUVET [10%] |
| 28 | 5.3 | Création du forum |  | 4d | 2004-09-23 | 2004-09-28 | 26 | 100% | Adrien BOUVET [40%] |
| 29 | 5.4 | Création compte SVN |  | 1d | 2004-09-25 | 2004-09-27 |  | 100% | Jérôme GUERS [10%] |
| 30 | 5.5 | Description des outils de gestions |  | 15d | 2004-10-22 | 2004-11-11 |  | 100% | Adrien BOUVET [50%]; Jérôme GUERS [30%] |
| 31 | 6 | **Cahier des Charges Fonctionnelles** |  | 33d | 2004-10-05 | 2004-11-18 |  | 99% |  |
| 32 | 6.1 | Formation à la réalisation des UC |  | 1d | 2004-10-05 | 2004-10-05 |  | 100% | Jérôme GUERS [80%] |
| 33 | 6.2 | Répartition des UC à réaliser | milestone | 0d | 2004-10-06 | 2004-10-06 |  | 100% | Prâsad RAMASSAMY; Adrien BOUVET; Guillaume GUERRIN; Valère FOREL; Fabien APPERT; Jérôme GUERS [80%] |
| 34 | 6.3 | **Réalisation des diagrammes UC** |  | 11d | 2004-10-07 | 2004-10-21 | 33 | 100% |  |
| 35 | 6.3.1 | UC Visu infos des enseignants & stats |  | 11d | 2004-10-07 | 2004-10-21 |  | 100% | Fabien APPERT |
| 36 | 6.3.2 | UC Gestion du groupe |  | 11d | 2004-10-07 | 2004-10-21 |  | 100% | Adrien BOUVET |
| 37 | 6.3.3 | UC Gestion Salles&Matériels |  | 11d | 2004-10-07 | 2004-10-21 |  | 100% | Guillaume GUERRIN |
| 38 | 6.3.4 | UC Séances & Indispo Enseignants |  | 11d | 2004-10-07 | 2004-10-21 |  | 100% | Jérôme GUERS [80%] |
| 39 | 6.3.5 | UC Visu d'un EDT & Export |  | 11d | 2004-10-07 | 2004-10-21 |  | 100% | Valère FOREL |
| 40 | 6.3.6 | UC Gestion de l'appli |  | 11d | 2004-10-07 | 2004-10-21 |  | 100% | Prâsad RAMASSAMY |
| 41 | 6.4 | Mise au point avec consultant UML | milestone | 0d | 2004-10-18 | 2004-10-18 |  | 100% | Prâsad RAMASSAMY; Adrien BOUVET; Guillaume GUERRIN; Valère FOREL; Fabien APPERT; Jérôme GUERS [80%] |
| 42 | 6.5 | Structuration en paquetages |  | 9d | 2004-10-19 | 2004-10-29 | 41 | 100% | Fabien APPERT |
| 43 | 6.6 | Réalisation de la documentation des UC |  | 9d | 2004-10-19 | 2004-10-29 |  | 100% | Prâsad RAMASSAMY; Valère FOREL |
| 44 | 6.7 | Première relecture et mise en commun |  | 1d | 2004-10-28 | 2004-10-28 | 43 |  | Prâsad RAMASSAMY; Adrien BOUVET [50%]; Guillaume GUERRIN [50%]; Valère FOREL; Fabien APPERT; Jérôme GUERS [50%] |
| 45 | 6.8 | Réalisation des FQM par UC |  | 9d | 2004-10-29 | 2004-11-10 | 44 | 100% | Prâsad RAMASSAMY; Valère FOREL; Fabien APPERT [50%] |
| 46 | 6.9 | Diagramme des paquetages |  | 6d | 2004-10-29 | 2004-11-05 |  | 100% | Fabien APPERT [50%] |
| 47 | 7 | **Spécification de l'IG** |  | 9d | 2004-11-09 | 2004-11-19 |  |  |  |
| 48 | 7.1 | Zoning de l'interface |  | 3d | 2004-11-09 | 2004-11-11 |  |  | Prâsad RAMASSAMY; Fabien APPERT; Jérôme GUERS [80%] |
| 49 | 7.2 | Définition des Boites de dialogue mineures |  | 6d | 2004-11-12 | 2004-11-19 | 48 |  | Jérôme GUERS [80%] |
| 50 | 7.3 | Description de la fenêtre principale |  | 6d | 2004-11-12 | 2004-11-19 | 48 |  | Prâsad RAMASSAMY |
| 51 | 7.4 | Définition des boîtes de dialogues complexes |  | 6d | 2004-11-12 | 2004-11-19 | 48 |  | Fabien APPERT |
| 52 | 7.5 | Définition de la Charte Graphique |  | 8d | 2004-11-10 | 2004-11-19 |  |  | Adrien BOUVET |

Notes:
- 26: 10min
- 27: 20min
- 28: 2h
- 29: Recherche d'un hébergeur SVN : 2h
- 30: JG : 2h (SVN + outil collaboratif) / AB : 2h (forum, mail, site et relecture)
- 32: 2h de réunion entre chefs de projet pour échanger les connaissances de chaque groupe
- 33: Réunion d'avancement d'1h30 ayant abordée ce point
- 35: 6h
- 36: 2h
- 37: 1h30
- 38: 2h30
- 39: 3h
- 40: 2h30
- 41: 2 heures de TD Génie Logiciel
- 42: 6h
- 43: VF : 4h30 / PR : 3h
- 44: 4h de réunion pour mise en accord des définitions réalisées
- 45: VF : 4h / PR : 2h
- 46: 6h
- 48: Travail perso puis 2 réunions pour la définition des zones

| ID | WBS | Task | Duration | Start | Finish | Predecessors | Complete | Resources |
| --- | --- | --- | --- | --- | --- | --- | --- | --- |
| 53 | 8 | **Cahier des charges techniques** | 73d | 2004-10-19 | 2005-01-27 |  | 30% |  |
| 54 | 8.1 | **Pré-Rapport technique** | 18d | 2004-10-19 | 2004-11-11 |  | 100% |  |
| 55 | 8.1.1 | Elaboration des besoin | 2d | 2004-10-19 | 2004-10-20 |  | 100% | Guillaume GUERRIN |
| 56 | 8.1.2 | Correction des besoins | 2d | 2004-10-21 | 2004-10-22 | 55 | 100% | Guillaume GUERRIN |
| 57 | 8.1.3 | Recherche des technologies | 8d | 2004-10-23 | 2004-11-03 | 56 | 100% | Guillaume GUERRIN [50%] |
| 58 | 8.1.4 | Redaction de la documentation | 6d | 2004-10-31 | 2004-11-08 | 57 | 100% |  |
| 59 | 8.2 | **Etude technique** | 16d | 2004-11-09 | 2004-11-30 |  |  |  |
| 60 | 8.2.1 | Test des différentes SGBDR | 6d | 2004-11-09 | 2004-11-16 |  |  | Valère FOREL |
| 61 | 8.2.2 | Tests des bibliothèques Java-LDAP | 5d | 2004-11-15 | 2004-11-19 |  |  | Valère FOREL |
| 62 | 8.2.3 | Choix du serveur d'application | 5d | 2004-11-20 | 2004-11-26 |  |  | Valère FOREL |
| 63 | 8.2.4 | Manipulation des fichiers (XML, Exports, ...) | 6d | 2004-11-09 | 2004-11-16 |  |  | Guillaume GUERRIN |
| 64 | 8.2.5 | Test des bibliothèques Applications réparties | 6d | 2004-11-15 | 2004-11-22 |  |  | Guillaume GUERRIN |
| 65 | 8.2.6 | Test des bibliothèques d'envoi de mail | 3d | 2004-11-22 | 2004-11-24 |  |  | Guillaume GUERRIN |
| 66 | 8.3 | Description de l'architecture logicielle | 37d | 2004-11-23 | 2005-01-12 |  |  |  |
| 67 | 9 | Développement | 30d | 2005-01-04 | 2005-02-14 |  |  |  |
| 68 | 10 | Correction et mise en forme | 13d | 2005-02-08 | 2005-02-24 |  |  |  |

Notes:
- 55: 1h30
- 56: 1h
- 57: 5h
- 58: 4h
